# Construccion Edificio Torre B - UTEC Lima

Schedule from MS Project XML, 2026-06-01 to 2027-09-27, 9 hours a day, costs in S.
Consorcio LabTec Construcciones

## Calendars

- Calendario Obra Torre B: Mon-Fri 07:00-12:30, 13:30-17:00; Sat 07:00-12:00; Sun off.

## Resources

| Resource | Group | Rate | Notes |
| --- | --- | --- | --- |
| Sin recurso asignado |  |  |  |
| Director de Proyecto | Gerencia | 125 | Supervision estrategica del proyecto |
| Jefe de Oficina Tecnica | Gerencia | 95 | Control de cronograma y costos |
| Contratista General | Gerencia | 80 | Coordinacion general subcontratistas |
| Cuadrilla de Estructuras | Estructuras | 45 | Rendimiento: 25 m3 concreto/dia; 220 kg acero/dia |
| Cuadrilla de Excavacion | Tierras | 38 | Rendimiento: 400 m3 material suelto/dia con excavadora |
| Ingeniero HVAC | Instalaciones | 90 | Diseno y supervision HVAC laboratorios criticos |
| Electricista Jefe | Instalaciones | 75 | MT/BT, tableros, alumbrado |
| Gasfitero Jefe | Instalaciones | 65 | Instalaciones sanitarias agua y desague |
| Especialista CI | Instalaciones | 80 | Contraincendios, rociadores, red seca-humeda |
| Topografo | Tecnico | 55 | Rendimiento: trazo y replanteo 2200 m2/semana |
| Asesor Legal | Gestion | 150 | Tramites municipales y contractuales |
| Representante Municipal | Gestion | 60 | Liaison con municipalidad y DC |
| Especialista en Seguridad | SSOMA | 60 | SSOMA, EPP, senalizacion de seguridad |
| Cuadrilla Obras Provisionales | Provisional | 32 | Campamento, cercos, accesos provisionales |
| Cuadrilla Demolicion + Excavadora | Tierras | 52 | Rendimiento demolicion: 85 m2/dia |
| Cuadrilla Excavacion + Volquetes | Tierras | 48 | Excavacion: 400 m3/dia; elim. 380 m3/dia |
| Cuadrilla Especializada + Perforadora | Tierras | 65 | Muro pantalla: 8 ml/dia perforacion |
| Cuadrilla Cimentacion + Concretera + Grua | Estructuras | 58 | Vaciado zapatas: 22 m3/dia |
| Concretera | Equipos | 180 | Mezcladora 11p3; produccion: 30 m3/turno |
| Grua Torre | Equipos | 350 | Capacidad 6 ton a 30m; uso continuo estructura |
| Cuadrilla Sanitaria | Instalaciones | 42 | Rendimiento tuberias CPVC: 25 ml/dia |
| Cuadrilla Electrica | Instalaciones | 48 | Rendimiento tuberias PVC-SEL: 40 ml/dia |
| Cuadrilla HVAC | Instalaciones | 55 | Montaje ductos Spiro: 18 ml/dia |
| Cuadrilla CiN | Instalaciones | 50 | Instalacion rociadores: 35 und/dia |
| Cuadrilla Contraincendios | Instalaciones | 50 | Red humeda y seca, deteccion y alarma |
| Especialista Gases Especiales | Instalaciones | 85 | N2, CO2, aire comprimido, vacio laboratorios |
| Albanil Jefe + Cuadrilla Albanileria | Acabados | 40 | Rendimiento albanileria: 8 m2/dia por operario |
| Ceramista | Acabados | 38 | Rendimiento porcelanato: 12 m2/dia |
| Albanil Jefe | Acabados | 48 | Supervision y acabados finos |
| Cuadrilla Albanileria | Acabados | 35 | Rendimiento tarrajeo: 20 m2/dia |
| Soldador Especializado + Cuadrilla Metalica | Acabados | 62 | Fachada y carpinteria metalica |
| Pintor Jefe | Acabados | 42 | Rendimiento pintura: 60 m2/dia |
| Cuadrilla Pintura | Acabados | 32 | Pintura latex 2 manos interior/exterior |
| Soldador Especializado | Acabados | 65 | Ventanas y metalicos especiales |
| Cuadrilla Metalica | Acabados | 45 | Montaje fachada y carpinteria |
| Proveedor Equipamiento Lab | Equipamiento | 55 | Suministro e instalacion mobiliario fijo |
| Supervisor Electrico | Comision. | 75 | Pruebas y comisionamiento electrico |
| Supervisor Mecanico | Comision. | 70 | Pruebas sanitarias y HVAC |
| Inspector Defensa Civil | Comision. | 80 | Inspeccion CI y certificacion DC |
| Inspector Municipal | Comision. | 70 | Inspeccion final y conformidad |
| Residente de Obra | Comision. | 85 | Levantamiento observaciones y cierre |
| Cuadrilla Desmontaje | Provisional | 35 | Retiro campamento y limpieza final |
| Cuadrilla Demolicion | Tierras | 40 | Demolicion estructuras existentes |
| Excavadora 200HP | Equipos | 280 | Rendimiento excavacion: 400 m3/dia |

## Schedule

| ID | WBS | Task | Type | Duration | Start | Finish | Predecessors | Total slack | Resources | Work | Cost | PresupuestoCD_Soles | CostoPresupuestado_Soles | RendimientoDiario | FasePrincipal |
| --- | --- | --- | --- | --- | --- | --- | --- | --- | --- | --- | --- | --- | --- | --- | --- |
| 1 | 1 | **Proyecto Torre B - UTEC Lima** |  | 415d | 2026-06-01 | 2027-09-27 |  | 0d |  | 8714h | 220,000 | 22000000.00 | 22000000.00 | 2.330 |  |
| 2 | 1.1 | **F1 - Gestion, permisos y obras provisionales** |  | 60d | 2026-06-01 | 2026-08-08 |  | 0d |  | 1265h | 7,442.49 | 744249.00 | 744249.00 | 2.340 |  |
| 3 | 1.1.1 | A01 Constitucion de equipo y plan de gestion |  | 15d | 2026-06-01 | 2026-06-17 | 2 | 0d | Topografo; Director de Proyecto [50%] | 270h | 1,860.62 | 186062.00 | 186062.00 | 2.000 | F1 |
| 4 | 1.1.2 | A02 Licencia de construccion municipal |  | 30d | 2026-06-18 | 2026-07-22 | 3 | 0d | Topografo; Asesor Legal | 665h | 2,790.93 | 279093.00 | 279093.00 | 2.460 | F1 |
| 5 | 1.1.3 | A03 Autorizacion Defensa Civil |  | 20d | 2026-06-18 | 2026-07-10 | 3 | 0d | Topografo; Representante Municipal | 180h | 930.31 | 93031.00 | 93031.00 | 1.000 | F1 |
| 6 | 1.1.4 | A04 Campamento y servicios provisionales de obra |  | 10d | 2026-07-23 | 2026-08-03 | 4, 5 | 0d | Cuadrilla Obras Provisionales | 130h | 930.31 | 93031.00 | 93031.00 | 1.440 | F1 |
| 7 | 1.1.5 | A05 Accesos vehiculares y senalizacion perimetral |  | 5d | 2026-08-04 | 2026-08-08 | 6 | 0d | Especialista en Seguridad | 20h | 930.32 | 93032.00 | 93032.00 | 0.440 | F1 |
| 8 | 1.1.6 | H1 Inicio oficial de obra | milestone | 0d | 2026-08-08 | 2026-08-08 | 6, 7 | 0d |  |  |  |  |  |  | F1 |
| 9 | 1.2 | **F2 - Movimiento de tierras y cimentacion** |  | 97d | 2026-08-10 | 2026-11-30 |  | 0d |  | 563h | 22,139.99 | 2213999.00 | 2213999.00 | 0.640 |  |
| 10 | 1.2.1 | A06 Demolicion y limpieza del terreno |  | 20d | 2026-08-10 | 2026-09-01 | 8 | 0d | Cuadrilla Demolicion + Excavadora; Cuadrilla Demolicion; Excavadora 200HP | 85h | 3,721.24 | 372124.00 | 372124.00 | 0.470 | F2 |
| 11 | 1.2.2 | A07 Trazo y replanteo topografico |  | 7d | 2026-09-02 | 2026-09-09 | 10 | 0d | Topografo | 63h | 558.14 | 55814.00 | 55814.00 | 1.000 | F2 |
| 12 | 1.2.3 | A08 Excavacion masiva sotanos (2 niveles) |  | 40d | 2026-09-10 | 2026-10-26 | 11 | 0d | Cuadrilla Excavacion + Volquetes; Excavadora 200HP | 165h | 11,163.56 | 1116356.00 | 1116356.00 | 0.460 | F2 |
| 13 | 1.2.4 | A09 Muro pantalla y entibacion perimetral |  | 30d | 2026-09-10 | 2026-10-14 | 11 | 0d | Cuadrilla Especializada + Perforadora | 125h | 2,418.24 | 241824.00 | 241824.00 | 0.460 | F2 |
| 14 | 1.2.5 | A10 Cimentacion (zapatas y vigas de cimentacion) |  | 30d | 2026-10-27 | 2026-11-30 | 12, 13 | 0d | Cuadrilla Cimentacion + Concretera + Grua | 125h | 4,278.82 | 427882.00 | 427882.00 | 0.460 | F2 |
| 15 | 1.2.6 | H2 Cimentacion concluida | milestone | 0d | 2026-11-30 | 2026-11-30 | 14 | 0d |  |  |  |  |  |  | F2 |
| 16 | 1.3 | **F3 - Estructura de concreto armado** |  | 115d | 2026-12-01 | 2027-04-13 |  | 0d |  | 2515h | 66,424.22 | 6642422.00 | 6642422.00 | 2.430 |  |
| 17 | 1.3.1 | A11 Estructura Sotano 2 (encofrado, acero, vaciado) |  | 20d | 2026-12-01 | 2026-12-23 | 15 | 0d | Cuadrilla de Estructuras; Concretera; Grua Torre; Topografo [50%] | 350h | 9,074.11 | 907411.00 | 907411.00 | 1.940 | F3 |
| 18 | 1.3.2 | A12 Estructura Sotano 1 (encofrado, acero, vaciado) |  | 20d | 2026-12-24 | 2027-01-15 | 17 | 0d | Cuadrilla de Estructuras; Concretera; Grua Torre; Topografo [50%] | 350h | 9,074.11 | 907411.00 | 907411.00 | 1.940 | F3 |
| 19 | 1.3.3 | A13 Estructura pisos 1 y 2 (columnas, vigas, losas) |  | 30d | 2027-01-16 | 2027-02-19 | 18 | 0d | Cuadrilla de Estructuras; Concretera; Grua Torre; Topografo [50%] | 520h | 18,148.23 | 1814823.00 | 1814823.00 | 1.930 | F3 |
| 20 | 1.3.4 | A14 Estructura pisos 3, 4 y 5 (columnas, vigas, losas) |  | 45d | 2027-02-20 | 2027-04-13 | 19 | 0d | Cuadrilla de Estructuras; Concretera; Grua Torre; Topografo [50%] | 775h | 22,685.28 | 2268528.00 | 2268528.00 | 1.910 | F3 |
| 21 | 1.3.5 | A15 Escaleras, rampas y nucleos de circulacion vertical |  | 30d | 2027-02-20 | 2027-03-26 | 19 | 0d | Cuadrilla de Estructuras; Concretera; Grua Torre; Topografo [50%] | 520h | 7,442.49 | 744249.00 | 744249.00 | 1.930 | F3 |
| 22 | 1.3.6 | H3 Estructura culminada | milestone | 0d | 2027-04-13 | 2027-04-13 | 20, 21 | 0d |  |  |  |  |  |  | F3 |
| 23 | 1.4 | **F4 - Instalaciones de especialidades** |  | 75d | 2027-01-16 | 2027-04-13 |  | 0d |  | 2604h | 62,929.04 | 6292904.00 | 6292904.00 | 3.860 |  |
| 24 | 1.4.1 | A16 Instalaciones sanitarias (agua, desague, pluviales) |  | 50d | 2027-01-16 | 2027-03-15 | 18 | 0d | Gasfitero Jefe; Cuadrilla Sanitaria; Topografo [50%] | 655h | 9,303.11 | 930311.00 | 930311.00 | 1.460 | F4 |
| 25 | 1.4.2 | A17 Instalaciones electricas MT/BT, tableros, alumbrado |  | 60d | 2027-01-16 | 2027-03-26 | 18 | 0d | Electricista Jefe; Cuadrilla Electrica; Topografo [50%] | 790h | 18,606.22 | 1860622.00 | 1860622.00 | 1.460 | F4 |
| 26 | 1.4.3 | A18 HVAC laboratorios criticos y zonas especiales |  | 45d | 2027-02-20 | 2027-04-13 | 19 | 0d | Ingeniero HVAC; Cuadrilla HVAC; Topografo [50%] | 590h | 18,234.1 | 1823410.00 | 1823410.00 | 1.460 | F4 |
| 27 | 1.4.4 | A19 Sistema contraincendios (rociadores, red seca-humeda) |  | 35d | 2027-02-20 | 2027-04-01 | 19 | 0d | Especialista CI; Cuadrilla Contraincendios | 460h | 8,000.68 | 800068.00 | 800068.00 | 1.460 | F4 |
| 28 | 1.4.5 | A20 Gases especiales (N2, CO2, aire comprimido, vacio) |  | 25d | 2027-02-20 | 2027-03-20 | 19 | 0d | Especialista Gases Especiales | 100h | 5,581.87 | 558187.00 | 558187.00 | 0.440 | F4 |
| 29 | 1.4.6 | A21 Senalizacion de evacuacion y control de accesos |  | 15d | 2027-03-27 | 2027-04-13 | 25 | 0d | Especialista en Seguridad | 9h | 3,163.06 | 316306.00 | 316306.00 | 0.070 | F4 |
| 30 | 1.4.7 | H4 Instalaciones concluidas | milestone | 0d | 2027-04-13 | 2027-04-13 | 24, 25, 26, 27, 28, 29 | 0d |  |  |  |  |  |  | F4 |

| ID | WBS | Task | Type | Duration | Start | Finish | Predecessors | Total slack | Resources | Work | Cost | PresupuestoCD_Soles | CostoPresupuestado_Soles | RendimientoDiario | FasePrincipal |
| --- | --- | --- | --- | --- | --- | --- | --- | --- | --- | --- | --- | --- | --- | --- | --- |
| 31 | 1.5 | **F5 - Acabados arquitectonicos y equipamiento** |  | 100d | 2027-04-14 | 2027-08-07 |  | 0d |  | 1140h | 24,188.09 | 2418809.00 | 2418809.00 | 1.270 |  |
| 32 | 1.5.1 | A22 Albanileria y tabiqueria interior |  | 39d | 2027-04-14 | 2027-05-28 | 20 | 0d | Albanil Jefe; Cuadrilla Albanileria | 330h | 9,297 | 929700.00 | 929700.00 | 0.940 | F5 |
| 33 | 1.5.2 | A23 Revestimientos pisos de porcelanato y paredes |  | 36d | 2027-05-29 | 2027-07-09 | 32 | 0d | Ceramista; Cuadrilla Albanileria | 300h | 7,442.3 | 744230.00 | 744230.00 | 0.930 | F5 |
| 34 | 1.5.3 | A24 Carpinteria metalica, ventanas y fachada exterior |  | 30d | 2027-05-29 | 2027-07-02 | 32 | 0d | Soldador Especializado; Cuadrilla Metalica | 250h | 3,720 | 372000.00 | 372000.00 | 0.930 | F5 |
| 35 | 1.5.4 | A25 Pintura interior y exterior (2 manos) |  | 20d | 2027-07-10 | 2027-08-02 | 33, 34 | 0d | Pintor Jefe; Cuadrilla Pintura | 160h | 1,859 | 185900.00 | 185900.00 | 0.890 | F5 |
| 36 | 1.5.5 | A26 Equipamiento basico de laboratorios (mobiliario fijo) |  | 25d | 2027-07-10 | 2027-08-07 | 33 | 0d | Proveedor Equipamiento Lab | 100h | 1,869.79 | 186979.00 | 186979.00 | 0.440 | F5 |
| 37 | 1.5.6 | H5 Acabados y equipamiento completados | milestone | 0d | 2027-08-07 | 2027-08-07 | 35, 36 | 0d |  |  |  |  |  |  | F5 |
| 38 | 1.6 | **F6 - Comisionamiento, pruebas y entrega** |  | 43d | 2027-08-09 | 2027-09-27 |  | 0d |  | 627h | 2,938.4 | 293840.00 | 293840.00 | 1.620 |  |
| 39 | 1.6.1 | A27 Pruebas y comisionamiento instalaciones electricas |  | 7d | 2027-08-09 | 2027-08-16 | 37 | 0d | Supervisor Electrico; Topografo [50%] | 30h | 558.19 | 55819.00 | 55819.00 | 0.480 | F6 |
| 40 | 1.6.2 | A28 Pruebas sanitarias y HVAC |  | 7d | 2027-08-09 | 2027-08-16 | 37 | 0d | Supervisor Mecanico | 30h | 558.19 | 55819.00 | 55819.00 | 0.480 | F6 |
| 41 | 1.6.3 | A29 Pruebas sistema contraincendios |  | 7d | 2027-08-09 | 2027-08-16 | 37 | 0d | Inspector Defensa Civil; Topografo [50%] | 93h | 558.19 | 55819.00 | 55819.00 | 1.480 | F6 |
| 42 | 1.6.4 | A30 Inspeccion final municipal y Defensa Civil |  | 12d | 2027-08-17 | 2027-08-30 | 39, 40, 41 | 0d | Inspector Municipal; Inspector Defensa Civil; Topografo [50%] | 158h | 837.28 | 83728.00 | 83728.00 | 1.460 | F6 |
| 43 | 1.6.5 | A31 Levantamiento de observaciones y cierre de obra |  | 14d | 2027-08-31 | 2027-09-15 | 42 | 0d | Residente de Obra; Topografo [50%] | 186h | 279.09 | 27909.00 | 27909.00 | 1.480 | F6 |
| 44 | 1.6.6 | A32 Desmontaje de campamento y limpieza final |  | 10d | 2027-09-16 | 2027-09-27 | 43 | 0d | Cuadrilla Desmontaje; Topografo [50%] | 130h | 137.46 | 13746.00 | 13746.00 | 1.440 | F6 |
| 45 | 1.6.7 | H6 Entrega formal del edificio a UTEC | milestone | 0d | 2027-09-27 | 2027-09-27 | 43, 44 | 0d |  |  |  |  |  |  | F6 |
